# CiC Acceleration Jul-Dec 2026

How a schedule from GanttProject changed from version to version. A marks actual dates.

## Version 1 (saved 2026-07-22)

Note of the change: Repo-wide nonprofit-to-PBC language cleanup; sync task tracking and safety testing

| ID | WBS | Task | Duration | Start | Finish | Predecessors | Complete |
| --- | --- | --- | --- | --- | --- | --- | --- |
| 1 | 1 | **A - PROTOTYPES AND USERS** | 111d | 2026-07-17 | 2026-12-18 |  |  |
| 2 |  | Bedrock integration + AWS Budget Action (Jonathan) - DELAYED, re-engage ~2026-07-19/20 | 5d | 2026-07-20 | 2026-07-24 |  |  |
| 3 |  | Prototype 1 runs (15-25 testers, both modes) | 11d | 2026-07-30 | 2026-08-13 | 2 |  |
| 4 |  | P1 analysis: actuals, tester quotes, one story | 3d | 2026-08-11 | 2026-08-13 | 3 |  |
| 5 |  | P2 cohort (~100 users) | 34d | 2026-09-15 | 2026-10-30 | 4, 41 |  |
| 6 |  | Early Access ramp 300 to 500 users | 34d | 2026-11-03 | 2026-12-18 | 5, 43 |  |
| 7 |  | GATE: Lane A confirmed - 500 users | 0d | 2026-12-18 | 2026-12-18 | 6 |  |
| 8 | 2 | **B - WORLD BUILDING** | 100d | 2026-08-03 | 2026-12-18 |  |  |
| 9 |  | Guided starter question sets (4 live worlds) | 9d | 2026-08-03 | 2026-08-13 |  | 75% |
| 10 |  | Ancient world 5: build + battery + deploy gates | 6d | 2026-08-03 | 2026-08-10 |  |  |
| 11 |  | Ancient world 6: build + battery + deploy gates | 6d | 2026-08-11 | 2026-08-18 | 10 |  |
| 12 |  | Ancient world 7: build + battery + deploy gates | 6d | 2026-08-19 | 2026-08-26 | 11 |  |
| 13 |  | Ancient world 8: build + battery + deploy gates | 6d | 2026-08-27 | 2026-09-03 | 12 |  |
| 14 |  | Ancient world 9: build + battery + deploy gates | 6d | 2026-09-04 | 2026-09-11 | 13 |  |
| 15 |  | MILESTONE: 9 ancient worlds complete | 0d | 2026-09-11 | 2026-09-11 | 14 |  |
| 16 |  | Reformation selection + Living Tradition confirmations | 8d | 2026-09-14 | 2026-09-23 | 14 |  |
| 17 |  | Reformation world 1: build + battery + LT gate | 6d | 2026-09-24 | 2026-10-01 | 16 |  |
| 18 |  | Reformation world 2: build + battery + LT gate | 6d | 2026-10-02 | 2026-10-09 | 17 |  |
| 19 |  | Reformation world 3: build + battery + LT gate | 6d | 2026-10-12 | 2026-10-19 | 18 |  |
| 20 |  | Reformation world 4: build + battery + LT gate | 6d | 2026-10-20 | 2026-10-27 | 19 |  |
| 21 |  | Reformation world 5: build + battery + LT gate | 6d | 2026-10-28 | 2026-11-04 | 20 |  |
| 22 |  | Reformation world 6: build + battery + LT gate | 6d | 2026-11-05 | 2026-11-12 | 21 |  |
| 23 |  | Reformation world 7: build + battery + LT gate | 6d | 2026-11-13 | 2026-11-20 | 22 |  |
| 24 |  | MILESTONE: all 16 worlds built (stretch 8-10 only if ahead) | 0d | 2026-11-20 | 2026-11-20 | 23 |  |
| 25 |  | Build freeze + final upgrade pass | 4d | 2026-12-01 | 2026-12-04 | 24 |  |
| 26 |  | Weekly quality-upgrade batches (ongoing) | 99d | 2026-08-03 | 2026-12-17 |  |  |
| 27 | 3 | **C - VALIDATION (Article 31)** | 109d | 2026-07-17 | 2026-12-16 |  |  |
| 28 |  | Reviewer brief (one page) - MOST TIME-CRITICAL | 2d | 2026-07-17 | 2026-07-20 |  | 75% |
| 29 |  | TEDS professor outreach to signed engagement | 25d | 2026-07-21 | 2026-08-24 | 28 |  |
| 30 |  | Second reviewer outreach (Fairbairn or Laing) | 12d | 2026-08-17 | 2026-09-01 | 28 |  |
| 31 |  | GATE: two reviewers engaged (Sept 1) | 0d | 2026-09-02 | 2026-09-02 | 29, 30 |  |
| 32 |  | Round 1 holistic review (9 ancient worlds) | 34d | 2026-09-07 | 2026-10-22 | 31 |  |
| 33 |  | Reformation-era reviewer engaged (by Oct 15) | 11d | 2026-10-01 | 2026-10-15 | 28 |  |
| 34 |  | Round 1 revisions applied | 10d | 2026-10-26 | 2026-11-06 | 32 |  |
| 35 |  | Round 2 review (Reformation + methodology ext.) | 25d | 2026-11-09 | 2026-12-11 | 21, 33 |  |
| 36 |  | Launch honesty language finalized | 3d | 2026-12-14 | 2026-12-16 | 35 |  |
| 37 | 4 | **D - PLATFORM AND ENGINEERING** | 108d | 2026-07-17 | 2026-12-15 |  |  |
| 38 |  | Session caps + AWS spend backstop verified (Jonathan) | 2d | 2026-07-20 | 2026-07-21 |  |  |
| 39 |  | Fix + test transcript-logging gap (frame-breaker/relational-safety turns not captured) | 2d | 2026-07-18 | 2026-07-21 |  |  |
| 40 |  | Increment 1: Front-end budget compliance (citation inline migration + table-bar consolidation) | 5d | 2026-08-17 | 2026-08-21 |  |  |
| 41 |  | Increment 3: Post-table question serving (role-served walks, Curriculum V1.0 JSON) - shipped in UI | 5d | 2026-08-26 | 2026-09-01 | 9, 51 |  |
| 42 |  | Increment 4: World Map Tier A merge (front-end thread; never before/during Prototype 1) | 5d | 2026-09-02 | 2026-09-08 | 41 |  |
| 43 |  | Engagement One: 500-user infra + Tier-1 caching | 20d | 2026-09-21 | 2026-10-16 | 4, 74 |  |
| 44 |  | Engagement Two: pre-public audit | 18d | 2026-11-16 | 2026-12-09 | 43, 76 |  |
| 45 |  | Audit mechanism (invisible register) + minor-caution mechanism | 29d | 2026-11-02 | 2026-12-10 | 43 |  |
| 46 |  | GATE: Lane B public flip go/no-go | 0d | 2026-12-15 | 2026-12-15 | 36, 44, 45 |  |
| 47 |  | Representative Modes: design, prompt architecture, exploration branch build, verification, validation plan, integration assessment (RM-1..RM-6) | 1d | 2026-07-16 | 2026-07-16 |  | 100% |
| 48 |  | RM-7: Mark reviews Design Spec S6 demonstration artifact | 1d | 2026-07-18 | 2026-07-20 |  |  |
| 49 |  | RM-8: Validation run - Battery A (feature existence gate, costs live API calls) | 2d | 2026-07-21 | 2026-07-22 | 48 |  |
| 50 |  | RM-9: Validation run - Batteries B-D (drift, overclaiming, adversarial) | 3d | 2026-07-23 | 2026-07-27 | 49 |  |
| 51 |  | RM-10 / Increment 2: Role selection UI + Representative Modes merge decision (front-end thread; never before/during Prototype 1) | 2d | 2026-08-24 | 2026-08-25 | 40, 49 |  |
| 52 |  | RM-11: Onboarding copy - mention role selection | 1d | 2026-08-26 | 2026-08-26 | 51 |  |
| 53 |  | RM-12: role=/worlds=/mode= URL parse-site reconciliation (waits on whichever of Representative Modes or World Map merges second) | 1d | 2026-09-08 | 2026-09-08 | 42, 51 |  |
| 54 |  | RM-13: Tier B - role-default transparency mode (blocked on Mode One/Two toggle) | 1d | 2026-09-01 | 2026-09-01 |  |  |
| 55 |  | RM-14: Tier C - closing-resources register by role (blocked on closing resources) | 1d | 2026-09-01 | 2026-09-01 |  |  |
| 56 |  | RM-15: Tier D - role-aware safety classifiers (deliberately not designed, not scoped) | 1d | 2026-09-01 | 2026-09-01 |  |  |
| 57 |  | TR-1..TR-3: Tour strategy, evidentiary analysis, Chloe demo build + recordings, decision log | 1d | 2026-07-16 | 2026-07-16 |  | 100% |
| 58 |  | TR-confirm: Mark confirms voice-only interpretation + evidentiary-absence commitment | 1d | 2026-07-18 | 2026-07-20 |  |  |
| 59 |  | TR-4: L4 Tour Manifest Template + review-cycle definition | 2d | 2026-07-18 | 2026-07-21 |  |  |
| 60 |  | TR-5: Tour Eligibility Gate as a repeatable per-world checklist | 2d | 2026-07-18 | 2026-07-21 |  |  |
| 61 |  | TR-6: Asset-sourcing sub-pipeline (documented + tooled) | 3d | 2026-07-18 | 2026-07-22 |  |  |
| 62 |  | TR-8: Recording pipeline confirmed reusable per world | 1d | 2026-07-18 | 2026-07-20 |  |  |
| 63 |  | TR-7: Templated tour renderer (world supplies manifest + assets) | 3d | 2026-07-20 | 2026-07-22 | 59 |  |
| 64 |  | TR-9: Scene-narration validation probe category (validation-suite thread) | 2d | 2026-07-20 | 2026-07-21 | 59 |  |
| 65 |  | TR-10: House-Churches/Chloe - formalize demo into reviewed Tour Manifest | 3d | 2026-07-21 | 2026-07-23 | 58, 59 |  |
| 66 |  | TR-11: Syriac/Mar Yausep - manifest for syrstory009 (needs pronunciation pass) | 4d | 2026-07-24 | 2026-07-29 | 61 |  |
| 67 |  | TR-12: Desert/Papnoute - manifest for desertstory008 (no worship-service tour) | 3d | 2026-07-28 | 2026-07-30 | 59, 66 |  |
| 68 |  | TR-13: Bethlehem Circle/Albina - manifest for hal_story10 (produce last, no liturgical tour) | 3d | 2026-07-31 | 2026-08-04 | 59, 67 |  |
| 69 |  | TR-14: cic-poc integration (tour_manifest.py, mode-overlay, invitation card, tour view) - behind Increment 1 + role selection; never before/during P1 | 10d | 2026-08-27 | 2026-09-09 | 40, 51 |  |
| 70 |  | TR-15: World Map 'Take a tour' handoff (needs TR-7, TR-14, and the map itself merged) | 3d | 2026-09-09 | 2026-09-11 | 42, 63, 69 |  |

| ID | WBS | Task | Duration | Start | Finish | Predecessors | Complete |
| --- | --- | --- | --- | --- | --- | --- | --- |
| 71 | 5 | **E - FUNDING** | 120d | 2026-07-17 | 2026-12-31 |  |  |
| 72 |  | Church-designated fund agreed (pastor conversation) | 5d | 2026-07-17 | 2026-07-23 |  |  |
| 73 |  | Ring 1 ask: refreshed Letter to 15-20 names | 12d | 2026-08-17 | 2026-09-01 | 4, 72, 102 |  |
| 74 |  | GATE: $7,500 raised (Sept 1) | 0d | 2026-09-02 | 2026-09-02 | 73 |  |
| 75 |  | World sponsorship asks ($3,500 x 3-5 churches) | 40d | 2026-09-07 | 2026-10-30 | 101, 103 |  |
| 76 |  | GATE: ~$25,000 cumulative (Nov 1) | 0d | 2026-11-02 | 2026-11-02 | 75 |  |
| 77 |  | Paying pilots: 3-5 churches/classrooms (fork-decider) | 35d | 2026-10-05 | 2026-11-20 | 101 |  |
| 78 |  | NCF / DAF year-end asks | 20d | 2026-11-16 | 2026-12-11 |  |  |
| 79 |  | Public year-end appeal (post-CCSA) | 22d | 2026-12-01 | 2026-12-30 | 94 |  |
| 80 | 6 | **F - FAITHWAYS STUDIO PBC FORMATION (pivoted from nonprofit, 2026-07-21)** | 118d | 2026-07-17 | 2026-12-29 |  |  |
| 81 |  | Praxis interest form (5 minutes) | 1d | 2026-07-17 | 2026-07-17 |  |  |
| 82 |  | Entity prep: Faithways Studio PBC — Articles, Bylaws, IP Assignment, Shareholder Agreement (drafted + 3 independent review rounds) | 25d | 2026-08-03 | 2026-09-04 |  | 95% |
| 83 |  | DONE — Filed CO Articles of Incorporation (Faithways Studio, Inc., PBC). Entity ID 20261874960, Transaction # 20261874960 | 1d | 2026-07-21 | 2026-07-21 | 82 | 100% |
| 84 |  | DONE — EIN obtained from the IRS | 1d | 2026-07-21 | 2026-07-21 | 83 | 100% |
| 85 |  | DONE — Organizational Resolutions executed (Bylaws adopted, officers elected, share issuance + bank account authorized) | 1d | 2026-07-21 | 2026-07-21 | 84 | 100% |
| 86 |  | Open corporate bank account + fund $40 founder capital ($20 each) | 3d | 2026-07-25 | 2026-07-29 | 85 |  |
| 87 |  | DONE — IP Assignment Agreement and Shareholder Buy-Sell Agreement executed, copies given to Susan | 1d | 2026-07-21 | 2026-07-21 | 86 | 100% |
| 88 |  | Issue Notice of Uncertificated Shares to Mark and Susan (C.R.S. § 7-106-207 / § 7-101-505) | 1d | 2026-07-30 | 2026-07-30 | 87 |  |
| 89 |  | File 'Church in Conversation' Colorado trade name (DBA) | 1d | 2026-07-23 | 2026-07-23 | 83 |  |
| 90 |  | [SUPERSEDED — nonprofit path, not applicable to PBC] 1023-EZ filed | 8d | 2026-09-21 | 2026-09-30 |  |  |
| 91 |  | [SUPERSEDED — nonprofit path, not applicable to PBC] IRS determination (typical wait) | 40d | 2026-10-01 | 2026-11-25 | 90 |  |
| 92 |  | [SUPERSEDED — nonprofit path, not applicable to PBC] TechSoup / AWS nonprofit credits applications | 8d | 2026-11-30 | 2026-12-09 | 91 |  |
| 93 |  | [SUPERSEDED — nonprofit path, not applicable to PBC] Board recruitment: 3 clean independents (+ <=1 family) | 60d | 2026-08-17 | 2026-11-06 |  |  |
| 94 |  | [SUPERSEDED — nonprofit path, not applicable to PBC] CCSA charitable solicitation registration | 20d | 2026-10-19 | 2026-11-13 |  |  |
| 95 |  | [SUPERSEDED — covered by #620 above] Bank account + bookkeeping setup | 8d | 2026-10-05 | 2026-10-14 |  |  |
| 96 |  | [SUPERSEDED — nonprofit path, not applicable to PBC] D and O insurance quote + bind | 8d | 2026-11-09 | 2026-11-18 | 93 |  |
| 97 |  | [SUPERSEDED — nonprofit path, not applicable to PBC] First board meeting: bylaws, covenant, conflict + compensation policy, 2027 budget | 3d | 2026-11-16 | 2026-11-18 | 93 |  |
| 98 |  | [SUPERSEDED — nonprofit path, not applicable to PBC] MILESTONE: stipend trigger policy adopted | 0d | 2026-11-19 | 2026-11-19 | 97 |  |
| 99 |  | [SUPERSEDED — nonprofit path, not applicable to PBC] GATE: nonprofit fully established (board, policies, CCSA) | 0d | 2026-12-01 | 2026-12-01 | 94, 97 |  |
| 100 | 7 | **G - MINISTRY GROWTH AND COMMUNICATION** | 103d | 2026-08-11 | 2026-12-31 |  |  |
| 101 |  | Packet V0.2 = presentable business plan (P1 actuals in) | 8d | 2026-08-11 | 2026-08-20 | 4 |  |
| 102 |  | Letter to Friends + FAQ refresh (4-world reality, counts fixed) | 4d | 2026-08-11 | 2026-08-14 | 4 |  |
| 103 |  | Demo polish: 20-minute guided Table | 8d | 2026-09-01 | 2026-09-10 | 4 |  |
| 104 |  | Landing page + interest list live | 8d | 2026-08-24 | 2026-09-02 | 102 |  |
| 105 |  | Acadia Divinity peer call (Maxwell / Robbins) | 5d | 2026-08-17 | 2026-08-21 |  |  |
| 106 |  | Wheaton conversation (anchor cultivation + Wabash one-pager) | 20d | 2026-10-05 | 2026-10-30 | 101, 103 |  |
| 107 |  | Tom Beck: demonstration-first note + 30 minutes | 10d | 2026-10-12 | 2026-10-23 | 101, 103 |  |
| 108 |  | Lilly-wave positioning with anchor partner | 14d | 2026-12-01 | 2026-12-18 | 32, 106 |  |
| 109 |  | Praxis application prep (April 2027 window) | 12d | 2026-12-14 | 2026-12-29 |  |  |

## Version 2 (saved 2026-07-23)

Note of the change: Sync standing tracking artifacts to today's decisions and dispatches

Last finish 2026-12-31 → 2027-01-15 (+15d). Complete tasks 6 → 8.

Changed:

| ID | Task | Start | Finish | Complete | Other |
| --- | --- | --- | --- | --- | --- |
| 49 | RM-8: Validation run - Battery A - RAN 2026-07-22, FAILED, fixed same day + spot-verified; formal re-run still owed |  |  | 0% → 70% | was named RM-8: Validation run - Battery A (feature existence gate, costs live API calls) |
| 57 | [DONE - shelved, Phase 2] TR-1..TR-3: Tour strategy, evidentiary analysis, Chloe demo build + recordings, decision log |  |  |  | was named TR-1..TR-3: Tour strategy, evidentiary analysis, Chloe demo build + recordings, decision log |
| 58 | [DEFERRED - Phase 2] TR-confirm: Mark confirms voice-only interpretation + evidentiary-absence commitment | 2026-07-18 → 2027-01-04 (+170d) | 2026-07-20 → 2027-01-04 (+168d) |  | was named TR-confirm: Mark confirms voice-only interpretation + evidentiary-absence commitment |
| 59 | [DONE - shelved, Phase 2] TR-4: L4 Tour Manifest Template + review-cycle definition |  |  | 0% → 100% | was named TR-4: L4 Tour Manifest Template + review-cycle definition |
| 60 | [DONE - shelved, Phase 2] TR-5: Tour Eligibility Gate as a repeatable per-world checklist |  |  | 0% → 100% | was named TR-5: Tour Eligibility Gate as a repeatable per-world checklist |
| 61 | [DEFERRED - Phase 2] TR-6: Asset-sourcing sub-pipeline (documented + tooled) | 2026-07-18 → 2027-01-04 (+170d) | 2026-07-22 → 2027-01-06 (+168d) |  | was named TR-6: Asset-sourcing sub-pipeline (documented + tooled) |
| 62 | [DEFERRED - Phase 2] TR-8: Recording pipeline confirmed reusable per world | 2026-07-18 → 2027-01-04 (+170d) | 2026-07-20 → 2027-01-04 (+168d) |  | was named TR-8: Recording pipeline confirmed reusable per world |
| 63 | [DEFERRED - Phase 2] TR-7: Templated tour renderer (world supplies manifest + assets) | 2026-07-20 → 2027-01-04 (+168d) | 2026-07-22 → 2027-01-06 (+168d) |  | was named TR-7: Templated tour renderer (world supplies manifest + assets) |
| 64 | [DEFERRED - Phase 2] TR-9: Scene-narration validation probe category (validation-suite thread) | 2026-07-20 → 2027-01-04 (+168d) | 2026-07-21 → 2027-01-05 (+168d) |  | was named TR-9: Scene-narration validation probe category (validation-suite thread) |
| 65 | [DEFERRED - Phase 2] TR-10: House-Churches/Chloe - formalize demo into reviewed Tour Manifest | 2026-07-21 → 2027-01-04 (+167d) | 2026-07-23 → 2027-01-06 (+167d) |  | was named TR-10: House-Churches/Chloe - formalize demo into reviewed Tour Manifest |
| 66 | [DEFERRED - Phase 2] TR-11: Syriac/Mar Yausep - manifest for syrstory009 (needs pronunciation pass) | 2026-07-24 → 2027-01-04 (+164d) | 2026-07-29 → 2027-01-07 (+162d) |  | was named TR-11: Syriac/Mar Yausep - manifest for syrstory009 (needs pronunciation pass) |
| 67 | [DEFERRED - Phase 2] TR-12: Desert/Papnoute - manifest for desertstory008 (no worship-service tour) | 2026-07-28 → 2027-01-04 (+160d) | 2026-07-30 → 2027-01-06 (+160d) |  | was named TR-12: Desert/Papnoute - manifest for desertstory008 (no worship-service tour) |
| 68 | [DEFERRED - Phase 2] TR-13: Bethlehem Circle/Albina - manifest for hal_story10 (produce last, no liturgical tour) | 2026-07-31 → 2027-01-04 (+157d) | 2026-08-04 → 2027-01-06 (+155d) |  | was named TR-13: Bethlehem Circle/Albina - manifest for hal_story10 (produce last, no liturgical tour) |
| 69 | [DEFERRED - Phase 2] TR-14: cic-poc integration (tour_manifest.py, mode-overlay, invitation card, tour view) - behind Increment 1 + role selection; never before/during P1 | 2026-08-27 → 2027-01-04 (+130d) | 2026-09-09 → 2027-01-15 (+128d) |  | was named TR-14: cic-poc integration (tour_manifest.py, mode-overlay, invitation card, tour view) - behind Increment 1 + role selection; never before/during P1 |
| 70 | [DEFERRED - Phase 2] TR-15: World Map 'Take a tour' handoff (needs TR-7, TR-14, and the map itself merged; distinct from the World Map's own already-shipped 'Watch the flow' walkthrough, which is unaffected) | 2026-09-09 → 2027-01-04 (+117d) | 2026-09-11 → 2027-01-06 (+117d) |  | was named TR-15: World Map 'Take a tour' handoff (needs TR-7, TR-14, and the map itself merged) |

## Version 3 (saved 2026-07-23)

Note of the change: Sync standing tracking artifacts to today's relaunch

Last finish stays 2027-01-15. Complete tasks 8 → 10.

Changed:

| ID | Task | Complete | Other |
| --- | --- | --- | --- |
| 2 | Direct-API hosting (Render) - LIVE 2026-07-23, Atlas + cic-poc both up, verified end-to-end | 0% → 100% | was named Bedrock integration + AWS Budget Action (Jonathan) - DELAYED, re-engage ~2026-07-19/20 |
| 38 | Session caps + Render deploy verified live (message_cap.py, cic-poc.onrender.com) | 0% → 100% | was named Session caps + AWS spend backstop verified (Jonathan) |

## Version 4 (saved 2026-08-01)

Note of the change: Catch up the Gantt: entity-ID/date fix, RM 4-lane pause flagged

Last finish stays 2027-01-15.

Changed:

| ID | Task | Other |
| --- | --- | --- |
| 48 | [PAUSED - see 2026-07-24/25] RM-7: Mark reviews Design Spec S6 demonstration artifact | was named RM-7: Mark reviews Design Spec S6 demonstration artifact |
| 49 | [PAUSED - see 2026-07-24/25] RM-8: Validation run - Battery A - RAN 2026-07-22, FAILED, fixed same day + spot-verified; formal re-run still owed | was named RM-8: Validation run - Battery A - RAN 2026-07-22, FAILED, fixed same day + spot-verified; formal re-run still owed |
| 50 | [PAUSED - see 2026-07-24/25] RM-9: Validation run - Batteries B-D (drift, overclaiming, adversarial) | was named RM-9: Validation run - Batteries B-D (drift, overclaiming, adversarial) |
| 51 | [PAUSED - see 2026-07-24/25] RM-10 / Increment 2: Role selection UI + Representative Modes merge decision (front-end thread; never before/during Prototype 1; blocked on the 4-lane pause's re-entry trigger -- real pilot feedback from professors/academics -- not just Battery A) | was named RM-10 / Increment 2: Role selection UI + Representative Modes merge decision (front-end thread; never before/during Prototype 1) |
| 52 | [PAUSED - see 2026-07-24/25] RM-11: Onboarding copy - mention role selection | was named RM-11: Onboarding copy - mention role selection |
| 53 | [PAUSED - see 2026-07-24/25] RM-12: role=/worlds=/mode= URL parse-site reconciliation (waits on whichever of Representative Modes or World Map merges second) | was named RM-12: role=/worlds=/mode= URL parse-site reconciliation (waits on whichever of Representative Modes or World Map merges second) |
| 83 | DONE — Filed CO Articles of Incorporation (Faithways Studio, Inc., PBC). CORRECTED 2026-08-01: real filing is 2026-07-27, Entity ID 20261918758 -- the 2026-07-21 date below never actually completed (on-screen only, no receipt), refiled from scratch. Chart date kept at 07-21 so 624/625/621 below don't appear to predate their predecessor; the real sequencing question this raises (those 3 were signed 07-21, before the entity legally existed) is flagged to Mark/Susan, not resolved here -- see Decision Log 2026-07-27 | was named DONE — Filed CO Articles of Incorporation (Faithways Studio, Inc., PBC). Entity ID 20261874960, Transaction # 20261874960 |

## Version 5 (saved 2026-08-01)

Note of the change: Merge pull request #5 from mchadwick25-droid/claude/v8-v9-charter-lblaxp

Last finish stays 2027-01-15. Complete tasks 10 → 12.

Changed:

| ID | Task | Start | Finish | Duration | Complete | Other |
| --- | --- | --- | --- | --- | --- | --- |
| 10 | DONE — Ancient world 5: build + battery + deploy gates (Mark's report, 2026-08-01; exact world/date not individually tracked here, see Decision Log) | 2026-08-03 → 2026-07-24 (-10d) | 2026-08-10 → 2026-07-31 (-10d) |  | 0% → 100% | was named Ancient world 5: build + battery + deploy gates |
| 11 | DONE — Ancient world 6: build + battery + deploy gates (Mark's report, 2026-08-01; exact world/date not individually tracked here, see Decision Log) | 2026-08-11 → 2026-07-31 (-11d) | 2026-08-18 → 2026-07-31 (-18d) | 6d → 1d | 0% → 100% | was named Ancient world 6: build + battery + deploy gates |
| 12 | Ancient world 7: build + battery + deploy gates | 2026-08-19 → 2026-08-03 (-16d) | 2026-08-26 → 2026-08-10 (-16d) |  |  |  |
| 13 | Ancient world 8: build + battery + deploy gates | 2026-08-27 → 2026-08-11 (-16d) | 2026-09-03 → 2026-08-18 (-16d) |  |  |  |
| 14 | Ancient world 9: build + battery + deploy gates | 2026-09-04 → 2026-08-19 (-16d) | 2026-09-11 → 2026-08-26 (-16d) |  |  |  |
| 15 | MILESTONE: 9 ancient worlds complete | 2026-09-11 → 2026-08-26 (-16d) | 2026-09-11 → 2026-08-26 (-16d) |  |  |  |

## Version 6 (saved 2026-08-01)

Note of the change: Merge pull request #6 from mchadwick25-droid/claude/v8-v9-charter-lblaxp

Last finish stays 2027-01-15. Complete tasks 12 → 13.

Added:

| ID | Task | Duration | Start | Finish |
| --- | --- | --- | --- | --- |
| 27 | DONE — S6.2 record-store migration: all 6 live worlds (Desert, Alexandria, Syriac, Hieronymian, PAHC, Imperial-Juridical) migrated, frozen, and live-tested against the deployed site | 1d | 2026-08-01 | 2026-08-03 |

## Version 7 (saved 2026-08-02)

Note of the change: Sync Atlas v3 Pass 1 into standing files after independent re-verification

Last finish stays 2027-01-15.

Changed:

| ID | Task | Other |
| --- | --- | --- |
| 43 | Increment 4: World Map Tier A merge (front-end thread; never before/during Prototype 1) [note 2026-08-02: standalone-site prep (IC-10 palette + 2 defect fixes) DONE on cic-website, verified - see Task Board IC-10 + Decision Log; the merge itself below is still 0%, unstarted, gated on Mark's redesign-direction verdict] | was named Increment 4: World Map Tier A merge (front-end thread; never before/during Prototype 1) |

## Version 8 (saved 2026-08-03)

Note of the change: Merge origin/main (other threads' unrelated work) into the homepage reorder commit

Last finish stays 2027-01-15.

Changed:

| ID | Task | Other |
| --- | --- | --- |
| 43 | Increment 4: World Map Tier A merge (front-end thread; never before/during Prototype 1) [SUPERSEDED 2026-08-02: Pass 2 converged on 'one atlas, done right' - Tier A/B split and the old Tier A merge concept are moot. Real program is now the approved 17-increment Blueprint (2 tracks: Data & Methodology, Product) - see CiC_Atlas_V3_Build_Blueprint_V1_0.md, whose own status column is the ground truth; not duplicated here since per-era Step 0 pacing (~1 era/session) doesn't map to fixed calendar dates yet. Left at complete=0/unscheduled rather than given invented dates.] | was named Increment 4: World Map Tier A merge (front-end thread; never before/during Prototype 1) [note 2026-08-02: standalone-site prep (IC-10 palette + 2 defect fixes) DONE on cic-website, verified - see Task Board IC-10 + Decision Log; the merge itself below is still 0%, unstarted, gated on Mark's redesign-direction verdict] |
